# ★硅酸铝钠性能优化与工艺稳定

Schedule from a web Gantt chart, 2024-06-20 to 2024-07-16.
Sundays are off

## Schedule

| ID | WBS | Task | Duration | Start | Finish | Complete | Status |
| --- | --- | --- | --- | --- | --- | --- | --- |
| 2 | 1 | **★硅酸铝钠&长石1:1工艺稳定性提升** | 10d | 2024-06-20 | 2024-07-01 | 100% | done |
| 3 | 1.1 | **硅酸铝钠&长石1:1样块烧结** | 3d | 2024-06-20 | 2024-06-22 | 100% | done |
| 4 | 1.1.1 | 硅酸铝钠&长石1:1样块920℃烧结 | 2d | 2024-06-20 | 2024-06-21 | 100% | done |
| 5 | 1.1.2 | 硅酸铝钠&长石1:1样块930℃烧结 | 2d | 2024-06-21 | 2024-06-22 | 100% | done |
| 6 | 1.2 | 硅酸铝钠&长石1:1样块改性 | 2d | 2024-06-24 | 2024-06-25 | 100% | done |
| 7 | 1.3 | **硅酸铝钠&长石1:1树脂渗透** | 7d | 2024-06-24 | 2024-07-01 | 100% | done |
| 8 | 1.3.1 | 硅酸铝钠&长石1:1样块3:4:3树脂渗透 | 7d | 2024-06-24 | 2024-07-01 | 100% | done |
| 9 | 1.3.2 | 硅酸铝钠&长石1:1样块6:4树脂渗透 | 7d | 2024-06-24 | 2024-07-01 | 100% | done |
| 10 | 1.4 | 硅酸铝钠&长石1:1样块固化 | 1d | 2024-07-01 | 2024-07-01 | 100% | done |
| 11 | 2 | **★硅酸铝钠&长石1:1硬度提升** | 19d | 2024-06-20 | 2024-07-11 | 41% |  |
| 12 | 2.1 | **硅:长1:1+增强剂的样块烧结** | 10d | 2024-06-20 | 2024-07-01 | 72% |  |
| 13 | 2.1.1 | 硅:长1:1+5%CaCO3晶须(900/920℃) | 2d | 2024-06-20 | 2024-06-21 | 100% | done |
| 14 | 2.1.2 | 硅:长1:1+5%CaCO3长须(900/920℃) | 2d | 2024-06-20 | 2024-06-21 | 100% | done |
| 15 | 2.1.3 | 硅:长1:1+5%CaSO4晶须(900/920℃) | 2d | 2024-06-20 | 2024-06-21 | 100% | done |
| 16 | 2.1.4 | 硅:长1:1+5%MgO粉体(900/920℃) | 2d | 2024-06-20 | 2024-06-21 | 100% | done |
| 17 | 2.1.5 | 硅:长1:1+5%Ca3(PO4)2粉体(900/920℃) | 2d | 2024-06-24 | 2024-06-25 | 50% |  |
| 18 | 2.1.6 | 硅:长1:1+5%HAP粉体(900/920℃) | 2d | 2024-06-24 | 2024-06-25 | 50% |  |
| 19 | 2.1.7 | 硅:长1:1+10%CaCO3晶须(900/920℃) | 2d | 2024-06-29 | 2024-07-01 | 50% |  |
| 20 | 2.1.8 | 硅:长1:1+5%La2O3粉体(900/920℃) | 2d | 2024-06-29 | 2024-07-01 | 50% |  |
| 21 | 2.1.9 | 硅:长1:1+2%La2O3粉体(900/920℃) | 2d | 2024-06-29 | 2024-07-01 | 50% |  |
| 22 | 2.2 | 硅酸铝钠&长石1:1+增强剂样块改性 | 10d | 2024-06-21 | 2024-07-02 | 60% |  |
| 23 | 2.3 | 硅酸铝钠&长石1:1+增强剂样块渗透 | 17d | 2024-06-22 | 2024-07-11 |  |  |
| 24 | 2.4 | 硅酸铝钠&长石1:1+增强剂样块固化 | 1d | 2024-07-03 | 2024-07-03 |  |  |
| 25 | 3 | **★原料配比合成硅酸铝钠** | 11d | 2024-07-04 | 2024-07-16 |  | waiting |
| 26 | 3.1 | **原料配比合成硅酸铝钠成分样块烧结** | 3d | 2024-07-04 | 2024-07-06 |  | waiting |
| 27 | 3.1.1 | 石英+硅酸铝钠(900/950/1000℃） | 3d | 2024-07-04 | 2024-07-06 |  | waiting |
| 28 | 3.1.2 | 石英+冰晶石+氧化铝(900/950/1000℃） | 3d | 2024-07-04 | 2024-07-06 |  | waiting |
| 29 | 3.1.3 | 石英+氧化铝+碳酸钠(900/950/1000℃） | 3d | 2024-07-04 | 2024-07-06 |  | waiting |
| 30 | 3.2 | 原料配比合成硅酸铝钠成分样块改性 | 3d | 2024-07-05 | 2024-07-08 |  | waiting |
| 31 | 3.3 | 原料配比合成硅酸铝钠成分样块树脂渗透 | 8d | 2024-07-08 | 2024-07-16 |  | waiting |
| 32 | 3.4 | 原料配比合成硅酸铝钠成分样块固化 | 3d | 2024-07-12 | 2024-07-15 |  | waiting |
